# 26_083 DECATHLON CAMPUS - Planning EXE Phase 1 - GO/VRD/CM/Bardage + SPRINKLAGE

Schedule from MS Project XML, 2026-11-02 to 2027-02-16, status date 2026-11-02.
Planning détaillé Phase 1 (2026) - Lot Gros Œuvre / VRD / CM / Bardage et Lot Sprinklage
Decathlon Campus - Villeneuve d'Ascq

## Calendars

- Standard (lun-ven, jours fériés FR): Mon-Fri 08:00-12:00, 13:00-17:00; Sat-Sun off. Exceptions (off unless hours are given): 2026-11-11 (Armistice 1918), 2026-12-25 (Noël), 2027-01-01 (Jour de l'an).

## Schedule

| ID | WBS | Task | Type | Duration | Start | Finish | Predecessors | Lot |
| --- | --- | --- | --- | --- | --- | --- | --- | --- |
| 1 | 1 | **1. JALONS** |  | 1d | 2026-11-02 | 2026-11-02 |  |  |
| 2 | 1.1 | DÉMARRAGE PHASE 1 (OS) - date modifiable via Informations sur le projet | milestone | 0d | 2026-11-02 | 2026-11-02 |  | MOA |
| 3 | 2 | **2. INSTALLATION DE CHANTIER** |  | 6d | 2026-11-02 | 2026-11-09 |  |  |
| 4 | 2.1 | [SPK] Clôture de chantier, panneau de chantier, signalisation |  | 2d | 2026-11-02 | 2026-11-03 | 2 | SPK |
| 5 | 2.2 | [SPK] Base vie (25 pers., 2 bungalows réunion, ~100 m² stockage SPK) commune aux lots |  | 2d | 2026-11-04 | 2026-11-05 | 4 | SPK |
| 6 | 2.3 | [SPK] Raccordement fluides + évacuation de la base vie (eau, électricité, fosse toutes eaux) |  | 2d | 2026-11-06 | 2026-11-09 | 5 | SPK |
| 7 | 2.4 | [SPK] Armoire électrique de chantier + point d'eau près de la zone cuve |  | 1d | 2026-11-06 | 2026-11-06 | 5 | SPK |
| 8 | 2.5 | [SPK] Protection par bachage des équipements commerciaux et techniques existants |  | 1d | 2026-11-04 | 2026-11-04 | 4 | SPK |
| 9 | 2.6 | [GO] Pistes d'accès engins + plateforme de circulation sur géotextile classe 5 |  | 3d | 2026-11-04 | 2026-11-06 | 4 | GO |
| 10 | 2.7 | [GO] Dépose et stockage des bordures béton (réemploi en fin de chantier) |  | 1d | 2026-11-04 | 2026-11-04 | 4 | GO |
| 11 | 3 | **3. PHASAGE - DÉVOIEMENTS ET MISE HORS SERVICE SOURCE B2** |  | 66d | 2026-11-04 | 2027-02-08 |  |  |
| 12 | 3.1 | [GO] Piquetage/marquage et reconnaissance des réseaux existants dans l'emprise (DN100 AEP, DN150 incendie, EU/EV/EP/électricité/fibre) |  | 1d | 2026-11-04 | 2026-11-04 | 4 | GO |
| 13 | 3.2 | [GO] Dévoiement réseau incendie DN150 + alimentation AEP/arrosage DN100 hors emprise radier (essais, DOE) |  | 6d | 2026-11-05 | 2026-11-13 | 12 | GO |
| 14 | 3.3 | [VRD] Dévoiement EU / EV / EP / électricité / fibre / arrosage si nécessaire (relevé NCA) |  | 2d | 2026-11-05 | 2026-11-06 | 12 | VRD |
| 15 | 3.4 | [SPK] Raccordements provisoires pour maintien de la protection sprinkleur de l'établissement |  | 3d | 2026-11-04 | 2026-11-06 | 4 | SPK |
| 16 | 3.5 | [SPK] Consignation + vidange cuve source B2 et réseaux associés (mesures compensatoires actives) |  | 2d | 2026-11-18 | 2026-11-19 | 15, 112 | SPK |
| 17 | 3.6 | [SPK/MOA] Mesures compensatoires (renfort sécurité) + gardiennage pendant l'indisponibilité de la source B2 |  | 57d | 2026-11-18 | 2027-02-08 | 16SS, 136FF | SPK/MOA |
| 18 | 4 | **4. DÉPOSES ET DÉMOLITIONS - SOURCE B2 / LOCAUX** |  | 18d | 2026-11-09 | 2026-12-03 |  |  |
| 19 | 4.1 | **4.1 Cuve B2 et enclos brise-vue** |  | 18d | 2026-11-09 | 2026-12-03 |  |  |
| 20 | 4.1.1 | [GO] Dépose brise-vue bois + charpente métallique support + grille d'accès/porte grillagée (évacuation) |  | 3d | 2026-11-09 | 2026-11-12 | 4, 9 | GO |
| 21 | 4.1.2 | [SPK] Dépose et évacuation de la réserve source B existante + équipements et réseaux associés |  | 4d | 2026-11-20 | 2026-11-25 | 16, 20 | SPK |
| 22 | 4.1.3 | [VRD] Dépose des réseaux existants cuve B2 → local B2 → local A/GE (terrassement, évacuation, remblaiement) |  | 3d | 2026-11-26 | 2026-11-30 | 21, 16 | VRD |
| 23 | 4.1.4 | [GO] Démolition du radier existant + évacuation des gravats (maîtrise poussières) |  | 3d | 2026-11-26 | 2026-11-30 | 21, 13 | GO |
| 24 | 4.1.5 | [GO] Étêtage des fondations existantes à -1,00 m du niveau plateforme + évacuation |  | 2d | 2026-11-27 | 2026-11-30 | 23SS+1d | GO |
| 25 | 4.1.6 | [GO] Relevé géomètre + plan de récolement des ouvrages enterrés, adaptation des fondations |  | 1d | 2026-12-01 | 2026-12-01 | 24 | GO |
| 26 | 4.1.7 | [GO] (OPTION 5.4.4) Purge des fondations profondes existantes (-80 cm sous niveau final) + remblai sablo-graveleux |  | 2d | 2026-12-02 | 2026-12-03 | 25 | GO |

Notes:
- 2: Source / hypothèse : Modifier la date de début du projet : tout le planning se décalé automatiquement.
- 4: Source / hypothèse : Limites de prestations 1 ; CCTP GO 5.1.3-5.1.5. Démarrage conditionné au dossier GN13.
- 5: Source / hypothèse : Limites de prestations 1 ; CCTP SPK 1.19. / Durée recalée EXE (15 semaines) : renfort d'équipes / travail en parallèle.
- 6: Source / hypothèse : Limites de prestations 1 ; DPGF GO 5.1.6 (abonnements MOA). / Durée recalée EXE (15 semaines) : renfort d'équipes / travail en parallèle.
- 7: Source / hypothèse : Limites de prestations 1. / Durée recalée EXE (15 semaines) : renfort d'équipes / travail en parallèle.
- 8: Source / hypothèse : Limites de prestations 2 ; CCTP SPK 3.1.6.
- 9: Source / hypothèse : DPGF GO 5.3.3 ; Limites de prestations 1 (si nécessaire). / Durée recalée EXE (15 semaines) : renfort d'équipes / travail en parallèle.
- 10: Source / hypothèse : DPGF GO 5.3.4.
- 12: Source / hypothèse : CCTP GO 5.6.2 ; Limites de prestations 1. / Durée recalée EXE (15 semaines) : renfort d'équipes / travail en parallèle.
- 13: Source / hypothèse : DPGF GO 5.6.2 ; Limites de prestations 1. Continuité du réseau incendie à maintenir (coupure ponctuelle validée MOA). / Durée recalée EXE (15 semaines) : renfort d'équipes / travail en parallèle.
- 14: Source / hypothèse : Limites de prestations 1 (si nécessaire). / Durée recalée EXE (15 semaines) : renfort d'équipes / travail en parallèle.
- 15: Source / hypothèse : Limites de prestations 2 ; DPGF SPK 3.1.4 ; CCTP SPK 3.1.4. Durée estimée. / Durée recalée EXE (15 semaines) : renfort d'équipes / travail en parallèle.
- 16: Source / hypothèse : Limites de prestations 1/2. Décalage 25 jours ouvrés = 5 semaines de préavis gardiennage.
- 17: Source / hypothèse : Limites de prestations 2 ; DPGF SPK 3.1.4 / 3.1.5. Hamac : durée = vidange → remise en service B2.
- 20: Source / hypothèse : DPGF GO 5.4.1 ; Limites de prestations 4 / Travaux réserves d'eau B2. Fait avant la vidange pour réduire l'indisponibilité. / Durée recalée EXE (15 semaines) : renfort d'équipes / travail en parallèle.
- 21: Source / hypothèse : DPGF SPK 3.5 ; CCTP GO 5.4.2 (par lot SPK). Durée estimée (cuve acier 405 m³). / Durée recalée EXE (15 semaines) : renfort d'équipes / travail en parallèle.
- 22: Source / hypothèse : DPGF GO 5.6.3 ; Limites de prestations 1 (dépose réseaux depuis cuve B2 jusqu'au local source A et B2 = VRD). / Durée recalée EXE (15 semaines) : renfort d'équipes / travail en parallèle.
- 23: Source / hypothèse : DPGF GO 5.4.3 (ens.). Durée estimée. / Durée recalée EXE (15 semaines) : renfort d'équipes / travail en parallèle.
- 24: Source / hypothèse : Limites de prestations 4. / Durée recalée EXE (15 semaines) : renfort d'équipes / travail en parallèle.
- 25: Source / hypothèse : Limites de prestations 4 ; CCTP GO 5.4.4. / Durée recalée EXE (15 semaines) : renfort d'équipes / travail en parallèle.
- 26: Source / hypothèse : DPGF GO 5.4.4 OPTIONNEL : mode de fondation existant inconnu. Mettre la durée à 0 si l'option n'est pas retenue. / Durée recalée EXE (15 semaines) : renfort d'équipes / travail en parallèle.

| ID | WBS | Task | Duration | Start | Finish | Predecessors | Lot |
| --- | --- | --- | --- | --- | --- | --- | --- |
| 27 | 4.2 | **4.2 Local source B2 et local GE** | 4d | 2026-11-20 | 2026-11-25 |  |  |
| 28 | 4.2.1 | [SPK] Dépose GMPD source B2 + équipements, tuyauteries aspiration/refoulement (démontage et livraison du GMPD démonté) | 2d | 2026-11-20 | 2026-11-23 | 16 | SPK |
| 29 | 4.2.2 | [SPK] Dépose des réseaux existants local GE | 1d | 2026-11-20 | 2026-11-20 | 16 | SPK |
| 30 | 4.2.3 | [GO] Dépose des pièces de scellement existantes local B2 + reprise des percements (DN300, DN200, DN150, échappement) | 2d | 2026-11-24 | 2026-11-25 | 28 | GO |
| 31 | 4.2.4 | [GO] Démolition contrôlée réservation dalle basse et soubassement local GE (sciage, mise à nu des armatures) | 2d | 2026-11-23 | 2026-11-24 | 29 | GO |
| 32 | 4.2.5 | [GO] Dépose pièce de scellement existante local GE + création du percement DN200 | 1d | 2026-11-25 | 2026-11-25 | 31 | GO |
| 33 | 5 | **5. FONDATIONS ET RADIER - CUVE B2** | 24d | 2026-12-04 | 2027-01-08 |  |  |
| 34 | 5.1 | [GO] Plateforme de travail pour pieux (portance EV2 > 50 MPa, géotextile) | 2d | 2026-12-04 | 2026-12-07 | 25, 26 | GO |
| 35 | 5.2 | [GO] Épuisement des eaux / rabattement de nappe (nappe ~ 27,4 NGF) pendant les fondations | 17d | 2026-12-04 | 2026-12-29 | 34SS, 49FF | GO |
| 36 | 5.3 | [GO] Pieux à tarière creuse (amenée/repli du matériel, forage, armatures, béton) - ~20 à 25 u. à confirmer PEO | 4d | 2026-12-08 | 2026-12-11 | 34 | GO |
| 37 | 5.4 | [GO] Stockage sur polyane et évacuation des terres et boues de forage + nettoyage voies | 3d | 2026-12-09 | 2026-12-11 | 36SS+1d | GO |
| 38 | 5.5 | [GO] Essais et contrôle des pieux (DTU 13.2 / NF P94-262) | 2d | 2026-12-14 | 2026-12-15 | 36 | GO |
| 39 | 5.6 | [GO] Recépage des pieux | 1d | 2026-12-14 | 2026-12-14 | 36 | GO |
| 40 | 5.7 | [GO] Terrassement fouille radier + substitution remblais de portance + fond de forme (débord 1 m) | 2d | 2026-12-15 | 2026-12-16 | 39 | GO |
| 41 | 5.8 | [GO] Puisard de trop-plein de la cuve (terrassement, béton de propreté, grille circulable) | 2d | 2026-12-17 | 2026-12-18 | 40 | GO |
| 42 | 5.9 | [GO] Béton de propreté (e >= 5 cm) sous radier | 1d | 2026-12-17 | 2026-12-17 | 40 | GO |
| 43 | 5.10 | [GO] Boucle de terre fond de fouille (câble nu 25 mm2, R <= 3 ohms) + attentes de terre cuve | 1d | 2026-12-18 | 2026-12-18 | 42 | GO |
| 44 | 5.11 | [GO] Pose massifs, platines et boîtes de réservation de pre-scellement (poteaux brise-vue) | 1d | 2026-12-18 | 2026-12-18 | 42 | GO |
| 45 | 5.12 | [GO] Couche de forme + sablon d'égalisation + film polyéthylène | 1d | 2026-12-18 | 2026-12-18 | 42 | GO |
| 46 | 5.13 | [GO] Pose et incorporation de la tuyauterie d'aspiration DN300 sous radier (fournie SPK) + validation implantation SPK/GO | 1d | 2026-12-21 | 2026-12-21 | 45 | GO/SPK |
| 47 | 5.14 | [GO] Drain périphérique / gestion des eaux autour du radier (si G2PRO l'impose) | 1d | 2026-12-21 | 2026-12-21 | 45 | GO |
| 48 | 5.15 | [GO] Ferraillage radier (TS + HA), attentes pieux, réservations, fourreaux, coffrage de rives et bêches périphériques | 4d | 2026-12-22 | 2026-12-28 | 46, 44, 43, 47 | GO |
| 49 | 5.16 | [GO] Coulage du radier béton C25/30 XC2 XF1 (parement soigné, circulations brossées antidérapantes) | 1d | 2026-12-29 | 2026-12-29 | 48 | GO |
| 50 | 5.17 | [GO] Durcissement du radier avant chargement de la cuve (délai à valider BET / bureau de contrôle) | 7d | 2026-12-30 | 2027-01-08 | 49 | GO |

Notes:
- 28: Source / hypothèse : DPGF SPK 3.5 (Source B2 - GMPD). / Durée recalée EXE (15 semaines) : renfort d'équipes / travail en parallèle.
- 29: Source / hypothèse : Limites de prestations Travaux local GE. / Durée recalée EXE (15 semaines) : renfort d'équipes / travail en parallèle.
- 30: Source / hypothèse : DPGF GO 5.8.2 ; Limites de prestations Travaux source B2. / Durée recalée EXE (15 semaines) : renfort d'équipes / travail en parallèle.
- 31: Source / hypothèse : DPGF GO 5.8.5 ; Limites de prestations Travaux local GE. / Durée recalée EXE (15 semaines) : renfort d'équipes / travail en parallèle.
- 32: Source / hypothèse : Limites de prestations Travaux local GE. / Durée recalée EXE (15 semaines) : renfort d'équipes / travail en parallèle.
- 34: Source / hypothèse : Limites de prestations 4 ; DPGF GO 5.3.3. / Durée recalée EXE (15 semaines) : renfort d'équipes / travail en parallèle.
- 35: Source / hypothèse : DPGF GO 5.3.7 ; CCTP GO 4.7.2 ; Limites de prestations 3. Hamac plateforme → coulage radier.
- 36: Source / hypothèse : DPGF GO 5.5.1 (u) ; CCTP GO 5.5.1 ; G2PRO Fondasol. Hypothèse ~5 pieux/jour. / Durée recalée EXE (15 semaines) : renfort d'équipes / travail en parallèle.
- 37: Source / hypothèse : DPGF GO 5.5.2 / 5.3.8. / Durée recalée EXE (15 semaines) : renfort d'équipes / travail en parallèle.
- 38: Source / hypothèse : CCTP GO 5.5.1.
- 39: Source / hypothèse : CCTP GO 5.5.1. / Durée recalée EXE (15 semaines) : renfort d'équipes / travail en parallèle.
- 40: Source / hypothèse : DPGF GO 5.3.5 / 5.3.6 (m³). / Durée recalée EXE (15 semaines) : renfort d'équipes / travail en parallèle.
- 41: Source / hypothèse : DPGF GO 5.6.6 ; CCTP GO 5.6.6. / Durée recalée EXE (15 semaines) : renfort d'équipes / travail en parallèle.
- 42: Source / hypothèse : DPGF GO 5.5.3.
- 43: Source / hypothèse : DPGF GO 5.3.9 ; Limites de prestations 3 (boucle de terre du radier = GO). / Durée recalée EXE (15 semaines) : renfort d'équipes / travail en parallèle.
- 44: Source / hypothèse : DPGF GO 5.5.4. / Durée recalée EXE (15 semaines) : renfort d'équipes / travail en parallèle.
- 45: Source / hypothèse : CCTP GO 5.5.5. / Durée recalée EXE (15 semaines) : renfort d'équipes / travail en parallèle.
- 46: Source / hypothèse : Limites de prestations 4 : GO réalise, SPK accompagne (P) et valide l'implantation avant coulée. / Durée recalée EXE (15 semaines) : renfort d'équipes / travail en parallèle.
- 47: Source / hypothèse : Limites de prestations 4 (conditionnel). / Durée recalée EXE (15 semaines) : renfort d'équipes / travail en parallèle.
- 48: Source / hypothèse : DPGF GO 5.5.5 (m³). Durée estimée (radier ~ Ø 14 m). / Durée recalée EXE (15 semaines) : renfort d'équipes / travail en parallèle.
- 49: Source / hypothèse : DPGF GO 5.5.5 ; CCTP GO 4.4.
- 50: Source / hypothèse : Hypothèse 10 jours ouvrés. Passer à 20 jours si résistance à 28 j exigée. / Durée recalée EXE (15 semaines) : renfort d'équipes / travail en parallèle.

| ID | WBS | Task | Duration | Start | Finish | Predecessors | Lot |
| --- | --- | --- | --- | --- | --- | --- | --- |
| 51 | 6 | **6. RÉSERVE D'EAU AÉRIENNE B2 (620 m³)** | 23d | 2026-12-30 | 2027-02-01 |  |  |
| 52 | 6.1 | [SPK] Livraison cuve + équipements sur site, réception, stockage | 2d | 2026-12-30 | 2026-12-31 | 49 | SPK |
| 53 | 6.2 | [SPK] Implantation cuve, pose cornière de fixation, contrôle planéité | 1d | 2027-01-11 | 2027-01-11 | 50, 52 | SPK |
| 54 | 6.3 | [SPK] Montage cuve boulonnée Ø 12,48 m x H 5,74 m | 6d | 2027-01-12 | 2027-01-19 | 53 | SPK |
| 55 | 6.4 | [SPK] Pose feutre géotextile + poche PVC (garantie décennale) | 2d | 2027-01-20 | 2027-01-21 | 54 | SPK |
| 56 | 6.5 | [SPK] Toit autoportant galvanisé, échelle à crinoline, plateforme, trappe cadenassable | 3d | 2027-01-22 | 2027-01-26 | 55 | SPK |
| 57 | 6.6 | [SPK] Équipements : trop-plein DN150, vidange DN80, remplissage/retour essai DN150 disconnecté, aspiration DN300 anti-vortex, jauge, épingle chauffante, chambre de disconnexion, alarmes | 3d | 2027-01-22 | 2027-01-26 | 55 | SPK |
| 58 | 6.7 | [GO] Joint ciment périphérique autour de la cornière de fixation de la cuve | 1d | 2027-01-22 | 2027-01-22 | 55 | GO |
| 59 | 6.8 | [SPK] Réseaux EU aériens : trop-plein et vidange (DN200), sorties à 1,00 m du nu cuve | 1d | 2027-01-27 | 2027-01-27 | 57 | SPK |
| 60 | 6.9 | [SPK] Clapet anti-pollution type EA sur arrivée eau de ville DN65 + vers EU + vanne de contre-barrage | 1d | 2027-01-22 | 2027-01-22 | 55 | SPK |
| 61 | 6.10 | [SPK] Remplissage de la cuve (<= 36 h) + test d'étanchéité | 2d | 2027-01-29 | 2027-02-01 | 57, 56, 58, 60, 77 | SPK |
| 62 | 7 | **7. RÉSEAUX ENTERRÉS / TRANCHÉES COMMUNES** | 42d | 2026-12-01 | 2027-01-29 |  |  |
| 63 | 7.1 | **7.1 Tranchée 1 - cuve B2 ↔ local source B2** | 8d | 2026-12-30 | 2027-01-11 |  |  |
| 64 | 7.1.1 | [VRD] Ouverture tranchée commune (~ 25 ml estimés) | 2d | 2026-12-30 | 2026-12-31 | 49, 22, 13 | VRD |
| 65 | 7.1.2 | [VRD] Fourreaux électriques 2 x Ø90 (local B2 / réserve d'eau) + chambre de tirage | 1d | 2027-01-04 | 2027-01-04 | 64 | VRD |
| 66 | 7.1.3 | [SPK] Pose aspiration fonte DN300 + remplissage/retour essai DN150 (butées béton, tiges filetées) de la cuve à la pièce de scellement | 3d | 2027-01-04 | 2027-01-06 | 64, 46, 82 | SPK |
| 67 | 7.1.4 | [SPK] Épreuves hydrauliques des réseaux enterrés tranchée 1 | 1d | 2027-01-07 | 2027-01-07 | 66 | SPK |
| 68 | 7.1.5 | [VRD] Grillage avertisseur + remblaiement et compactage tranchée 1 (95 % OPM) | 2d | 2027-01-08 | 2027-01-11 | 67, 65 | VRD |
| 69 | 7.2 | **7.2 Tranchée 2 - local source B2 ↔ local GE / source A** | 11d | 2026-12-01 | 2026-12-15 |  |  |
| 70 | 7.2.1 | [VRD] Ouverture tranchée commune (~ 60 ml estimés, sciage voirie lourde + espace vert) | 3d | 2026-12-01 | 2026-12-03 | 22, 13 | VRD |
| 71 | 7.2.2 | [VRD] Fourreaux électriques 2 x Ø90 (local GE / local B2) + chambre de tirage | 1d | 2026-12-04 | 2026-12-04 | 70 | VRD |
| 72 | 7.2.3 | [SPK] Pose refoulement fonte DN200 de la pièce de scellement B2 jusqu'au local GE (butées béton) | 4d | 2026-12-04 | 2026-12-09 | 70, 82, 83 | SPK |
| 73 | 7.2.4 | [SPK] Épreuves hydrauliques du refoulement enterré tranchée 2 | 1d | 2026-12-10 | 2026-12-10 | 72 | SPK |
| 74 | 7.2.5 | [VRD] Grillage avertisseur + remblaiement et compactage tranchée 2 | 3d | 2026-12-11 | 2026-12-15 | 73, 71 | VRD |

Notes:
- 52: Source / hypothèse : CCTP SPK 3.5.4 b.
- 53: Source / hypothèse : CCTP SPK 3.5.4 b.
- 54: Source / hypothèse : DPGF SPK 3.5 (Réserve d'eau). Durée estimée. / Durée recalée EXE (15 semaines) : renfort d'équipes / travail en parallèle.
- 55: Source / hypothèse : CCTP SPK 3.5.4 b. / Durée recalée EXE (15 semaines) : renfort d'équipes / travail en parallèle.
- 56: Source / hypothèse : CCTP SPK 3.5.4 b. / Durée recalée EXE (15 semaines) : renfort d'équipes / travail en parallèle.
- 57: Source / hypothèse : DPGF SPK 3.5 ; Limites de prestations 4 (réserve aérienne y c. équipements). / Durée recalée EXE (15 semaines) : renfort d'équipes / travail en parallèle.
- 58: Source / hypothèse : DPGF GO 5.8.1 (ml) ; Limites de prestations 4.
- 59: Source / hypothèse : Limites de prestations 5 (Vidange - Eaux usées). / Durée recalée EXE (15 semaines) : renfort d'équipes / travail en parallèle.
- 60: Source / hypothèse : DPGF SPK 3.5 (Systèmes d'essai). / Durée recalée EXE (15 semaines) : renfort d'équipes / travail en parallèle.
- 61: Source / hypothèse : CCTP SPK 3.5.4 b. (remplissage en 36 h maximum). Évacuation EU du trop-plein nécessaire. / Durée recalée EXE (15 semaines) : renfort d'équipes / travail en parallèle.
- 64: Source / hypothèse : DPGF GO 5.6.1 (ml) ; Limites de prestations 5. Longueur estimée : à relever sur plan. / Durée recalée EXE (15 semaines) : renfort d'équipes / travail en parallèle.
- 65: Source / hypothèse : DPGF GO 5.6.4 / 5.6.5 ; Limites de prestations 5 (Électricité). / Durée recalée EXE (15 semaines) : renfort d'équipes / travail en parallèle.
- 66: Source / hypothèse : Limites de prestations 5 : tableau mentionne remplissage DN200 / retour essai DN150 (CCTP : DN150). / Durée recalée EXE (15 semaines) : renfort d'équipes / travail en parallèle.
- 67: Source / hypothèse : DPGF SPK 3.22.
- 68: Source / hypothèse : Limites de prestations 5 : remblaiement VRD après pose SPK.
- 70: Source / hypothèse : DPGF GO 5.6.1 / 5.3.2 ; Limites de prestations 5. Longueur estimée. / Durée recalée EXE (15 semaines) : renfort d'équipes / travail en parallèle.
- 71: Source / hypothèse : DPGF GO 5.6.4 / 5.6.5. / Durée recalée EXE (15 semaines) : renfort d'équipes / travail en parallèle.
- 72: Source / hypothèse : Limites de prestations 5 (Liaison local B2 ↔ local GE). / Durée recalée EXE (15 semaines) : renfort d'équipes / travail en parallèle.
- 73: Source / hypothèse : DPGF SPK 3.22.
- 74: Source / hypothèse : Limites de prestations 5.

| ID | WBS | Task | Duration | Start | Finish | Predecessors | Lot |
| --- | --- | --- | --- | --- | --- | --- | --- |
| 75 | 7.3 | **7.3 Tranchée 3 - EU (puisard trop-plein → regard existant)** | 28d | 2026-12-21 | 2027-01-29 |  |  |
| 76 | 7.3.1 | [VRD] Tranchée + réseau de collecte extérieur EU PVC DN200 (puisard/vidange → regard existant), regard 500x500 | 3d | 2026-12-21 | 2026-12-23 | 41 | VRD |
| 77 | 7.3.2 | [VRD] Raccordement sur réseau EU existant (branchement), boîte de branchement, reprise des sorties EU à 1,00 m | 1d | 2027-01-28 | 2027-01-28 | 76, 59 | VRD |
| 78 | 7.3.3 | [VRD] Remblaiement et compactage tranchée EU | 1d | 2027-01-29 | 2027-01-29 | 77 | VRD |
| 79 | 7.4 | **7.4 Électricité - réseaux enterrés** | 3d | 2027-01-05 | 2027-01-07 |  |  |
| 80 | 7.4.1 | [SPK] Réseau aérien + sortie fourreau à 1 m du nu bâtiment, câble TGBT → pénétration, câbles reports d'alarme (tirage) | 3d | 2027-01-05 | 2027-01-07 | 65, 71 | SPK |
| 81 | 8 | **8. LOCAL SOURCE B2 / LOCAL GE - SCELLEMENTS ET ÉQUIPEMENTS** | 13d | 2026-11-26 | 2026-12-14 |  |  |
| 82 | 8.1 | [GO] Pose nouvelles pièces de scellement local B2 (DN300, DN200, DN150, échappement), reprise mortier, étanchéité, calfeutrement | 2d | 2026-11-26 | 2026-11-27 | 30 | GO |
| 83 | 8.2 | [GO] Pose nouvelle pièce de scellement refoulement DN200 local GE + calfeutrement | 1d | 2026-11-26 | 2026-11-26 | 32 | GO |
| 84 | 8.3 | [SPK] Fourniture et installation du nouveau GMPD B2 (équipements, échappement/silencieux, réservoir fuel 500 L double peau) | 5d | 2026-11-30 | 2026-12-04 | 82, 28 | SPK |
| 85 | 8.4 | [SPK] Tuyauteries DN300 aspiration / DN200 refoulement dans le local B2 + canne d'essai DN150 | 4d | 2026-12-07 | 2026-12-10 | 84, 82 | SPK |
| 86 | 8.5 | [SPK] Remplacement nourrice pressostatique source B2 + pressostats | 1d | 2026-12-11 | 2026-12-11 | 85 | SPK |
| 87 | 8.6 | [SPK] Étalonnage du débitmètre électromagnétique source B2 (écart > 5 %) | 1d | 2026-12-11 | 2026-12-11 | 85 | SPK |
| 88 | 8.7 | [SPK] Armoire de commande/démarrage GMPD, câblage, raccordement armoire générale | 3d | 2026-12-07 | 2026-12-09 | 84 | SPK |
| 89 | 8.8 | [SPK] Ventilation mécanique avec clapet coupe-feu (sortie existante réutilisée) + calfeutrement coupe-feu des passages | 2d | 2026-11-30 | 2026-12-01 | 82 | SPK |
| 90 | 8.9 | [SPK] Sonde de température + thermostat reportés en alarme, BAES, prolongation protection sprinkleur dans l'entrée | 2d | 2026-12-02 | 2026-12-03 | 89 | SPK |
| 91 | 8.10 | [SPK] Affichages d'exploitation et étiquetage local B2 | 1d | 2026-12-04 | 2026-12-04 | 90 | SPK |
| 92 | 8.11 | [GO] Restauration couche de forme, dalle portée, soubassement et cuvelage local GE + durcisseur de dalle | 3d | 2026-12-10 | 2026-12-14 | 83, 72 | GO |
| 93 | 9 | **9. LOCAL SPRINKLEUR SOURCE A + POSTES** | 7d | 2026-11-04 | 2026-11-13 |  |  |
| 94 | 9.1 | [GO] Percement des voiles béton façade Nord : ventilation haute et basse + redressement des tableaux | 2d | 2026-11-04 | 2026-11-05 | 4 | GO |
| 95 | 9.2 | [SPK] Fourniture et pose des grilles de ventilation haute et basse | 1d | 2026-11-06 | 2026-11-06 | 94 | SPK |
| 96 | 9.3 | [SPK] Flocage de la toiture coupe-feu 1 h (local source A) | 2d | 2026-11-04 | 2026-11-05 | 4 | SPK |
| 97 | 9.4 | [SPK] Remplacement protection sprinkleur local A + postes (PC5 : CPE + vanne d'isolement, indicateur de passage d'eau), extension local eau glacée, gaine technique | 4d | 2026-11-05 | 2026-11-10 | 8 | SPK |
| 98 | 9.5 | [SPK] Sonde de température reportée en alarme + contacts anti-intrusion (portes local sprinkleur, atelier, TGBT) | 2d | 2026-11-12 | 2026-11-13 | 97 | SPK |
| 99 | 9.6 | [SPK] Armoire de répartition équipements annexes + disjoncteur depuis TGBT | 2d | 2026-11-04 | 2026-11-05 | 4 | SPK |
| 100 | 9.7 | [SPK] Affichages d'exploitation, étiquetage, BAPI, reprise peinture des canalisations du local | 2d | 2026-11-12 | 2026-11-13 | 97 | SPK |

Notes:
- 76: Source / hypothèse : DPGF GO 5.6.7 (ml) ; Limites de prestations 5. / Durée recalée EXE (15 semaines) : renfort d'équipes / travail en parallèle.
- 77: Source / hypothèse : Limites de prestations 5. / Durée recalée EXE (15 semaines) : renfort d'équipes / travail en parallèle.
- 78: Source / hypothèse : Limites de prestations 5.
- 80: Source / hypothèse : Limites de prestations 5 (Électricité). / Durée recalée EXE (15 semaines) : renfort d'équipes / travail en parallèle.
- 82: Source / hypothèse : DPGF GO 5.8.3 ; Limites de prestations Travaux source B2. / Durée recalée EXE (15 semaines) : renfort d'équipes / travail en parallèle.
- 83: Source / hypothèse : Limites de prestations Travaux local GE. / Durée recalée EXE (15 semaines) : renfort d'équipes / travail en parallèle.
- 84: Source / hypothèse : DPGF SPK 3.5 (Source B2). Durée estimée. / Durée recalée EXE (15 semaines) : renfort d'équipes / travail en parallèle.
- 85: Source / hypothèse : DPGF SPK 3.5. / Durée recalée EXE (15 semaines) : renfort d'équipes / travail en parallèle.
- 86: Source / hypothèse : DPGF SPK 3.5 (Nourrices). / Durée recalée EXE (15 semaines) : renfort d'équipes / travail en parallèle.
- 87: Source / hypothèse : DPGF SPK 3.5 (Systèmes d'essai).
- 88: Source / hypothèse : DPGF SPK 3.17 ; CCTP SPK 3.5.4.
- 89: Source / hypothèse : Limites de prestations Travaux local B2 ; DPGF SPK 3.4.1. / Durée recalée EXE (15 semaines) : renfort d'équipes / travail en parallèle.
- 90: Source / hypothèse : DPGF SPK 3.4.1. / Durée recalée EXE (15 semaines) : renfort d'équipes / travail en parallèle.
- 91: Source / hypothèse : DPGF SPK 3.4.1.
- 92: Source / hypothèse : DPGF GO 5.8.5 ; Limites de prestations Travaux local GE. / Durée recalée EXE (15 semaines) : renfort d'équipes / travail en parallèle.
- 94: Source / hypothèse : DPGF GO 5.8.4 (m²) ; Limites de prestations Travaux local sprinkleur source A. / Durée recalée EXE (15 semaines) : renfort d'équipes / travail en parallèle.
- 95: Source / hypothèse : Limites de prestations 4.
- 96: Source / hypothèse : Limites de prestations 4 ; DPGF SPK 3.4.1 (m²). Durée estimée. / Durée recalée EXE (15 semaines) : renfort d'équipes / travail en parallèle.
- 97: Source / hypothèse : DPGF SPK 3.4.1 ; CCTP SPK 3.6.1. / Durée recalée EXE (15 semaines) : renfort d'équipes / travail en parallèle.
- 98: Source / hypothèse : DPGF SPK 3.4.1. / Durée recalée EXE (15 semaines) : renfort d'équipes / travail en parallèle.
- 99: Source / hypothèse : DPGF SPK 3.4.1. / Durée recalée EXE (15 semaines) : renfort d'équipes / travail en parallèle.
- 100: Source / hypothèse : DPGF SPK 3.4.1. / Durée recalée EXE (15 semaines) : renfort d'équipes / travail en parallèle.

| ID | WBS | Task | Duration | Start | Finish | Predecessors | Lot |
| --- | --- | --- | --- | --- | --- | --- | --- |
| 101 | 10 | **10. SOURCES A / B1 / JOCKEY (AVANT vidange B2 - la B2 reste en service pendant ces travaux)** | 8d | 2026-11-05 | 2026-11-17 |  |  |
| 102 | 10.1 | [SPK] Dépose électropompe source B1 + équipements et canalisations, consignation électricité, câbles neutralisés | 2d | 2026-11-05 | 2026-11-06 | 8 | SPK |
| 103 | 10.2 | [SPK] Mise en place mesures compensatoires + raccordement provisoire pour coupure de la source A | 1d | 2026-11-05 | 2026-11-05 | 8 | SPK |
| 104 | 10.3 | [SPK] Remplacement électropompe source A (inclus nourrice pressostatique sources) | 3d | 2026-11-06 | 2026-11-10 | 103 | SPK |
| 105 | 10.4 | [SPK] Remplacement pompe jockey + alimentation d'aspiration sur eau de ville | 2d | 2026-11-06 | 2026-11-09 | 103 | SPK |
| 106 | 10.5 | [SPK] Reprise tuyauteries aspiration et refoulement source A + vannes reportées en alarme | 2d | 2026-11-12 | 2026-11-13 | 104 | SPK |
| 107 | 10.6 | [SPK] Remplacement armoire pompe jockey & source A + disjoncteur + câbles CR1 en amont coupure générale | 3d | 2026-11-06 | 2026-11-10 | 103 | SPK |
| 108 | 10.7 | [SPK] Réserve 30 m³ : remplissage manuel, plaque descriptive, remplacement contact de niveau + report alarme + test | 1d | 2026-11-06 | 2026-11-06 | 103 | SPK |
| 109 | 10.8 | [SPK] Dépose nourrice pressostatique (anciennes jockey, A, B1) + câbles | 1d | 2026-11-12 | 2026-11-12 | 104, 102 | SPK |
| 110 | 10.9 | [SPK] Nouvelle canne d'essai source A (vannes reportées en alarme) | 1d | 2026-11-16 | 2026-11-16 | 106 | SPK |
| 111 | 10.10 | [SPK] Réglage des seuils de démarrage de chaque source (NF EN 12845) | 1d | 2026-11-12 | 2026-11-12 | 104 | SPK |
| 112 | 10.11 | [SPK] Remise en service source A + levée des mesures compensatoires | 1d | 2026-11-17 | 2026-11-17 | 106, 107, 108, 110, 105, 109, 111 | SPK |
| 113 | 11 | **11. POSTES DE CONTRÔLE (après retour de la source A, B2 vidangée : mesures compensatoires)** | 12d | 2026-11-18 | 2026-12-03 |  |  |
| 114 | 11.1 | [SPK] Entretien triennal poste de contrôle PC1 (démontage, joints, clapet compensateur, essai réel point F) | 1d | 2026-11-18 | 2026-11-18 | 112 | SPK |
| 115 | 11.2 | [SPK] Entretien triennal poste de contrôle PC2 (démontage, joints, clapet compensateur, essai réel point F) | 1d | 2026-11-19 | 2026-11-19 | 114 | SPK |
| 116 | 11.3 | [SPK] Entretien triennal poste de contrôle PC3 (démontage, joints, clapet compensateur, essai réel point F) | 1d | 2026-11-20 | 2026-11-20 | 115 | SPK |
| 117 | 11.4 | [SPK] Entretien triennal poste de contrôle PC4 (démontage, joints, clapet compensateur, essai réel point F) | 1d | 2026-11-23 | 2026-11-23 | 116 | SPK |
| 118 | 11.5 | [SPK] Entretien triennal poste de contrôle PC5 (démontage, joints, clapet compensateur, essai réel point F) | 1d | 2026-11-24 | 2026-11-24 | 117 | SPK |
| 119 | 11.6 | [SPK] Entretien triennal poste de contrôle PC6 (démontage, joints, clapet compensateur, essai réel point F) | 1d | 2026-11-25 | 2026-11-25 | 118 | SPK |
| 120 | 11.7 | [SPK] Entretien triennal poste de contrôle PC7 (démontage, joints, clapet compensateur, essai réel point F) | 1d | 2026-11-26 | 2026-11-26 | 119 | SPK |
| 121 | 11.8 | [SPK] PC6 : dépose du vieux manomètre + remplacement du pressostat | 1d | 2026-11-26 | 2026-11-26 | 119 | SPK |
| 122 | 11.9 | [SPK] Contrôle visuel d'écoulement sur essai des PC + remplacement des gongs hydrauliques par une nourrice commune | 2d | 2026-11-27 | 2026-11-30 | 120 | SPK |
| 123 | 11.10 | [SPK] Bypass sur tous les postes de contrôle (7) avec vannes reportées en alarme | 4d | 2026-11-27 | 2026-12-02 | 120 | SPK |
| 124 | 11.11 | [SPK] Numérotation vannes barrage/test/vidange + schémas à jour sur colonnes montantes | 1d | 2026-12-03 | 2026-12-03 | 123, 122 | SPK |

Notes:
- 102: Source / hypothèse : DPGF SPK 3.5 (Source B1). / Durée recalée EXE (15 semaines) : renfort d'équipes / travail en parallèle.
- 103: Source / hypothèse : Limites de prestations 2 : coupures de sources ; B2 doit être revenue en service.
- 104: Source / hypothèse : DPGF SPK 3.5 (Source A).
- 105: Source / hypothèse : DPGF SPK 3.5 (Pompe jockey).
- 106: Source / hypothèse : DPGF SPK 3.5. / Durée recalée EXE (15 semaines) : renfort d'équipes / travail en parallèle.
- 107: Source / hypothèse : DPGF SPK 3.5. / Durée recalée EXE (15 semaines) : renfort d'équipes / travail en parallèle.
- 108: Source / hypothèse : DPGF SPK 3.5. / Durée recalée EXE (15 semaines) : renfort d'équipes / travail en parallèle.
- 109: Source / hypothèse : DPGF SPK 3.5 (Nourrices).
- 110: Source / hypothèse : DPGF SPK 3.5 (Systèmes d'essai). / Durée recalée EXE (15 semaines) : renfort d'équipes / travail en parallèle.
- 111: Source / hypothèse : DPGF SPK 3.5 ; CCTP SPK 3.5.6.
- 112: Source / hypothèse : Limites de prestations 2.
- 114: Source / hypothèse : DPGF SPK 3.6.1. Un seul PC hors service à la fois ; réseau en eau chaque fin de semaine (CCTP 3.1.4). Durée estimée 2 j/PC. / Durée recalée EXE (15 semaines) : renfort d'équipes / travail en parallèle.
- 115: Source / hypothèse : DPGF SPK 3.6.1. Un seul PC hors service à la fois ; réseau en eau chaque fin de semaine (CCTP 3.1.4). Durée estimée 2 j/PC. / Durée recalée EXE (15 semaines) : renfort d'équipes / travail en parallèle.
- 116: Source / hypothèse : DPGF SPK 3.6.1. Un seul PC hors service à la fois ; réseau en eau chaque fin de semaine (CCTP 3.1.4). Durée estimée 2 j/PC. / Durée recalée EXE (15 semaines) : renfort d'équipes / travail en parallèle.
- 117: Source / hypothèse : DPGF SPK 3.6.1. Un seul PC hors service à la fois ; réseau en eau chaque fin de semaine (CCTP 3.1.4). Durée estimée 2 j/PC. / Durée recalée EXE (15 semaines) : renfort d'équipes / travail en parallèle.
- 118: Source / hypothèse : DPGF SPK 3.6.1. Un seul PC hors service à la fois ; réseau en eau chaque fin de semaine (CCTP 3.1.4). Durée estimée 2 j/PC. / Durée recalée EXE (15 semaines) : renfort d'équipes / travail en parallèle.
- 119: Source / hypothèse : DPGF SPK 3.6.1. Un seul PC hors service à la fois ; réseau en eau chaque fin de semaine (CCTP 3.1.4). Durée estimée 2 j/PC. / Durée recalée EXE (15 semaines) : renfort d'équipes / travail en parallèle.
- 120: Source / hypothèse : DPGF SPK 3.6.1. Un seul PC hors service à la fois ; réseau en eau chaque fin de semaine (CCTP 3.1.4). Durée estimée 2 j/PC. / Durée recalée EXE (15 semaines) : renfort d'équipes / travail en parallèle.
- 121: Source / hypothèse : DPGF SPK 3.6.1.
- 122: Source / hypothèse : DPGF SPK 3.6.1. / Durée recalée EXE (15 semaines) : renfort d'équipes / travail en parallèle.
- 123: Source / hypothèse : DPGF SPK 3.6.2. ~1 j/PC. / Durée recalée EXE (15 semaines) : renfort d'équipes / travail en parallèle.
- 124: Source / hypothèse : DPGF SPK 3.6.1 (Remarque Q1) ; CCTP SPK 3.6.1. / Durée recalée EXE (15 semaines) : renfort d'équipes / travail en parallèle.

| ID | WBS | Task | Duration | Start | Finish | Predecessors | Lot |
| --- | --- | --- | --- | --- | --- | --- | --- |
| 125 | 12 | **12. ÉLECTRICITÉ, ALARMES, MISE À LA TERRE, PEINTURE (SPK)** | 56d | 2026-11-06 | 2027-01-27 |  |  |
| 126 | 12.1 | [SPK] Armoire électrique locale équipements sprinkleurs (asservissement et protection) dans le local source | 3d | 2026-11-06 | 2026-11-10 | 99 | SPK |
| 127 | 12.2 | [SPK] Fourniture, installation et câblage de tous les équipements sprinkleurs du local source | 3d | 2026-12-10 | 2026-12-14 | 126, 88 | SPK |
| 128 | 12.3 | [SPK] Raccordement des alimentations électriques du tableau d'alarme | 1d | 2026-12-15 | 2026-12-15 | 127 | SPK |
| 129 | 12.4 | [SPK] Tresses de mise à la terre des équipements sprinkleurs + nourrice des postes (raccord boucle de terre du radier) | 1d | 2027-01-27 | 2027-01-27 | 43, 57, 106 | SPK |
| 130 | 12.5 | [SPK] Report des alarmes créées (niveau réserve, vannes, températures, intrusion, CPE...) | 2d | 2027-01-08 | 2027-01-11 | 128, 80, 98, 90 | SPK |
| 131 | 12.6 | [SPK] Vérification de toutes les alarmes, existantes et créées | 1d | 2027-01-12 | 2027-01-12 | 130 | SPK |
| 132 | 12.7 | [SPK] Peinture des réseaux apparents (y compris raccords mécaniques) | 2d | 2026-12-11 | 2026-12-14 | 106, 85, 100 | SPK |
| 133 | 13 | **13. ESSAIS, MISE EN SERVICE ET REMISE EN SERVICE B2 (SPK)** | 61d | 2026-11-18 | 2027-02-12 |  |  |
| 134 | 13.1 | [SPK] Épreuves hydrauliques des réseaux (locaux B2, cuve, canne d'essai) | 2d | 2027-02-02 | 2027-02-03 | 85, 61 | SPK |
| 135 | 13.2 | [SPK] Essais source B2 : GMPD (démarrage, débit 360 m³/h, pression), seuils, débitmètre, canne d'essai | 2d | 2027-02-04 | 2027-02-05 | 88, 86, 87, 61, 134 | SPK |
| 136 | 13.3 | [SPK] REMISE EN SERVICE SOURCE B2 + levée des mesures compensatoires (retour à l'état de protection) | 1d | 2027-02-08 | 2027-02-08 | 135, 90, 131 | SPK |
| 137 | 13.4 | [SPK] Identification du matériel et des réseaux (pochoir) | 2d | 2026-12-15 | 2026-12-16 | 132 | SPK |
| 138 | 13.5 | [SPK] Vérifications, tests et contrôles des postes de contrôle, alarmes et points F | 2d | 2027-01-13 | 2027-01-14 | 124, 121, 131 | SPK |
| 139 | 13.6 | [SPK] Vérifications et essais des différentes sources conservées (A, jockey) | 2d | 2026-11-18 | 2026-11-19 | 112 | SPK |
| 140 | 13.7 | [SPK] Pièces de rechange protection automatique incendie | 1d | 2026-11-20 | 2026-11-20 | 139 | SPK |
| 141 | 13.8 | [SPK] Levée des remarques du dernier rapport semestriel Q1 (+ remarques complémentaires) | 2d | 2027-01-15 | 2027-01-18 | 138, 132, 100 | SPK |
| 142 | 13.9 | [SPK] Mise en service, séance de formation et d'instruction exploitant | 1d | 2027-02-09 | 2027-02-09 | 138, 139, 137, 140, 136 | SPK |
| 143 | 13.10 | [SPK] DOE lot sprinklage (plans de récolement, notices, PV d'essais) | 3d | 2027-02-10 | 2027-02-12 | 142, 141 | SPK |
| 144 | 14 | **14. BRISE-VUE : CHARPENTE, BARDAGE BOIS, PORTE (après cuve et réseaux)** | 10d | 2027-01-27 | 2027-02-09 |  |  |
| 145 | 14.1 | [GO/CM] Montage charpente métallique brise-vue (poteaux, pannes, contreventement) + scellement définitif des ancrages | 4d | 2027-01-27 | 2027-02-01 | 56, 57 | GO |
| 146 | 14.2 | [GO/Bardage] Sous-construction du bardage (profils oméga acier galvanisé sur poteaux) | 3d | 2027-01-29 | 2027-02-02 | 145SS+2d | GO |
| 147 | 14.3 | [GO/Bardage] Lames de bardage bois douglas à claire-voie (espacement 20 mm), coupes à 45°, saturateur | 6d | 2027-02-02 | 2027-02-09 | 146SS+2d | GO |
| 148 | 14.4 | [GO] Pose porte d'accès cuve B2 (ferme-porte, barre anti-panique, serrure compatible site) | 1d | 2027-02-03 | 2027-02-03 | 146 | GO |

Notes:
- 126: Source / hypothèse : DPGF SPK 3.17. / Durée recalée EXE (15 semaines) : renfort d'équipes / travail en parallèle.
- 127: Source / hypothèse : DPGF SPK 3.17. / Durée recalée EXE (15 semaines) : renfort d'équipes / travail en parallèle.
- 128: Source / hypothèse : DPGF SPK 3.17. / Durée recalée EXE (15 semaines) : renfort d'équipes / travail en parallèle.
- 129: Source / hypothèse : Limites de prestations 3. / Durée recalée EXE (15 semaines) : renfort d'équipes / travail en parallèle.
- 130: Source / hypothèse : DPGF SPK 3.16. / Durée recalée EXE (15 semaines) : renfort d'équipes / travail en parallèle.
- 131: Source / hypothèse : DPGF SPK 3.16. / Durée recalée EXE (15 semaines) : renfort d'équipes / travail en parallèle.
- 132: Source / hypothèse : DPGF SPK 3.18. / Durée recalée EXE (15 semaines) : renfort d'équipes / travail en parallèle.
- 134: Source / hypothèse : DPGF SPK 3.22 ; Limites de prestations 3 (essais hydrauliques = SPK). / Durée recalée EXE (15 semaines) : renfort d'équipes / travail en parallèle.
- 135: Source / hypothèse : DPGF SPK 3.22. / Durée recalée EXE (15 semaines) : renfort d'équipes / travail en parallèle.
- 136: Source / hypothèse : Jalon de fin d'indisponibilité de la source B2.
- 137: Source / hypothèse : DPGF SPK 3.22. / Durée recalée EXE (15 semaines) : renfort d'équipes / travail en parallèle.
- 138: Source / hypothèse : DPGF SPK 3.22. / Durée recalée EXE (15 semaines) : renfort d'équipes / travail en parallèle.
- 139: Source / hypothèse : DPGF SPK 3.22.
- 140: Source / hypothèse : DPGF SPK 3.22.
- 141: Source / hypothèse : DPGF SPK 3.11. Durée estimée (provision 3 %). / Durée recalée EXE (15 semaines) : renfort d'équipes / travail en parallèle.
- 142: Source / hypothèse : DPGF SPK 3.22. / Durée recalée EXE (15 semaines) : renfort d'équipes / travail en parallèle.
- 143: Source / hypothèse : DPGF SPK 3.1.2 ; Limites de prestations 3 (DOE chacun pour son lot). / Durée recalée EXE (15 semaines) : renfort d'équipes / travail en parallèle.
- 145: Source / hypothèse : DPGF GO 5.7.1 ; Limites de prestations 4. CCTP GO 1 : cuve et réseaux avant brise-vue. / Durée recalée EXE (15 semaines) : renfort d'équipes / travail en parallèle.
- 146: Source / hypothèse : DPGF GO 5.9.1 (m²). Durée estimée. / Durée recalée EXE (15 semaines) : renfort d'équipes / travail en parallèle.
- 147: Source / hypothèse : DPGF GO 5.9.2 (m²). Hypothèse ~40 m²/jour. / Durée recalée EXE (15 semaines) : renfort d'équipes / travail en parallèle.
- 148: Source / hypothèse : DPGF GO 5.9.3.

| ID | WBS | Task | Type | Duration | Start | Finish | Predecessors | Lot |
| --- | --- | --- | --- | --- | --- | --- | --- | --- |
| 149 | 15 | **15. VOIRIES ET ESPACES VERTS - REMISE EN ÉTAT (VRD)** |  | 37d | 2026-12-16 | 2027-02-08 |  |  |
| 150 | 15.1 | [VRD] Remise en place des bordures béton (joints résistants UV et hydrocarbures) |  | 1d | 2026-12-16 | 2026-12-16 | 74, 10 | VRD |
| 151 | 15.2 | [VRD] Réfection voie technique : reprofilage GNT 30 cm, géotextile cl.4, enrobé noir 5 cm au droit des réseaux |  | 3d | 2027-01-12 | 2027-01-14 | 150, 68 | VRD |
| 152 | 15.3 | [VRD] Dépose des pistes d'accès chantier + évacuation + reprofilage |  | 1d | 2027-02-02 | 2027-02-02 | 145, 78, 92, 68 | VRD |
| 153 | 15.4 | [VRD] Mouvements de terres, nivellement espaces verts + apport terre végétale 0,30 m mini |  | 2d | 2027-02-03 | 2027-02-04 | 152 | VRD |
| 154 | 15.5 | [VRD] Préparation avant engazonnement (nettoyage, rotavator 0,20 m, amendements, réglage) |  | 1d | 2027-02-05 | 2027-02-05 | 153 | VRD |
| 155 | 15.6 | [VRD] Engazonnement (semis 3 kg/are, roulage, ratissage) - plantations gazon |  | 1d | 2027-02-08 | 2027-02-08 | 154 | VRD |
| 156 | 15.7 | [VRD] Réfection des cheminements de chantier |  | 1d | 2027-02-03 | 2027-02-03 | 152 | VRD |
| 157 | 15.8 | [VRD] Curage + contrôle caméra des réseaux EU en fin de travaux |  | 1d | 2027-02-03 | 2027-02-03 | 78, 152 | VRD |
| 158 | 16 | **16. FIN DE CHANTIER, DOE, RÉCEPTION PHASE 1** |  | 5d | 2027-02-10 | 2027-02-16 |  |  |
| 159 | 16.1 | [GO] Constat d'huissier contradictoire de fin de travaux |  | 1d | 2027-02-10 | 2027-02-10 | 155, 156, 151, 157, 147 | GO |
| 160 | 16.2 | [GO] DOE lot GO/VRD : récolement ouvrages enterrés, PV essais béton/pieux, fiches techniques |  | 3d | 2027-02-11 | 2027-02-15 | 159, 38 | GO |
| 161 | 16.3 | [SPK] Nettoyage + repli du chantier : base vie, clôture, armoire de chantier, raccordements |  | 2d | 2027-02-11 | 2027-02-12 | 142, 159, 152 | SPK |
| 162 | 16.4 | [MOA/MOE] Opérations préalables à la réception (OPR) Phase 1 |  | 1d | 2027-02-16 | 2027-02-16 | 143, 160, 161 | MOA |
| 163 | 16.5 | FIN PHASE 1 - Réception des travaux | milestone | 0d | 2027-02-16 | 2027-02-16 | 162 | MOA |
| 164 | 17 | **17. PRESTATIONS TRANSVERSES (hamacs - durées calées sur les tâches liées)** |  | 72d | 2026-11-02 | 2027-02-12 |  |  |
| 165 | 17.1 | [GO] Gestion des portails / accès de chantier (ouverture, fermeture, surveillance) |  | 70d | 2026-11-02 | 2027-02-10 | 4SS, 159FF | GO |
| 166 | 17.2 | [GO] Entretien et nettoyage des abords, accès et voies (permanent) |  | 70d | 2026-11-02 | 2027-02-10 | 4SS, 159FF | GO |
| 167 | 17.3 | [GO/VRD] Homme trafic (voie pompier, arrivées/départs camions) - phases démolition à remise en état |  | 59d | 2026-11-09 | 2027-02-02 | 20SS, 152FF | GO |
| 168 | 17.4 | [SPK] Homme trafic - livraisons cuve, GMPD, fonte, levage |  | 23d | 2026-12-30 | 2027-02-01 | 52SS, 61FF | SPK |
| 169 | 17.5 | [SPK] Encadrement de chantier + location nacelle / bungalow / container |  | 72d | 2026-11-02 | 2027-02-12 | 4SS, 161FF | SPK |
| 170 | 17.6 | [GO] Bennes de chantier + évacuation gravats (part du lot) |  | 59d | 2026-11-09 | 2027-02-02 | 20SS, 152FF | GO |

Notes:
- 150: Source / hypothèse : DPGF GO 5.10.3 (ml).
- 151: Source / hypothèse : DPGF GO 5.10.4 (m²) ; Limites de prestations 6. / Durée recalée EXE (15 semaines) : renfort d'équipes / travail en parallèle.
- 152: Source / hypothèse : CCTP GO 5.3.3. / Durée recalée EXE (15 semaines) : renfort d'équipes / travail en parallèle.
- 153: Source / hypothèse : Limites de prestations 6. / Durée recalée EXE (15 semaines) : renfort d'équipes / travail en parallèle.
- 154: Source / hypothèse : DPGF GO 5.10.1. / Durée recalée EXE (15 semaines) : renfort d'équipes / travail en parallèle.
- 155: Source / hypothèse : DPGF GO 5.10.2 (m²). Contrôle à 1 mois / tonte à 15 j hors planning. / Durée recalée EXE (15 semaines) : renfort d'équipes / travail en parallèle.
- 156: Source / hypothèse : Limites de prestations 6. / Durée recalée EXE (15 semaines) : renfort d'équipes / travail en parallèle.
- 157: Source / hypothèse : Limites de prestations 5.
- 159: Source / hypothèse : DPGF GO 5.1.1 ; CCTP GO 5.1.1.
- 160: Source / hypothèse : Limites : DOE chacun pour son lot ; CCTP GO 2.3.7. / Durée recalée EXE (15 semaines) : renfort d'équipes / travail en parallèle.
- 161: Source / hypothèse : Limites de prestations 1 / 2. / Durée recalée EXE (15 semaines) : renfort d'équipes / travail en parallèle.
- 162: Source / hypothèse : Durée estimée. / Durée recalée EXE (15 semaines) : renfort d'équipes / travail en parallèle.
- 165: Source / hypothèse : Limites de prestations 1 : GO phase 1 ; CCTP GO 5.1.3.
- 166: Source / hypothèse : DPGF GO 5.1.11 ; CCTP GO 5.1.11.
- 167: Source / hypothèse : DPGF GO 5.1.12 ; Limites de prestations 2 (chacun pour son lot).
- 168: Source / hypothèse : Limites de prestations 2.
- 169: Source / hypothèse : DPGF SPK Frais de chantier / 3.1.2.
- 170: Source / hypothèse : DPGF GO 5.1.10.
